# 新咪表计划2014-10-20

Schedule from MS Project, 2016-06-13 to 2016-09-29, status date 2016-06-14, 7 hours a day.
微软中国

## Calendars

- 标准: Mon-Fri 08:00-12:00, 13:00-17:00; Sat-Sun off.

## Resources

| Resource |
| --- |
| 罗家国 |
| 刘浩 |
| 夏艳伟 |
| 产品组 |
| 郭勤 |
| 姚斌 |
| 易杰 |
| 许建辉 |
| 黄丛峰 |
| 软件组 |
| 工程部 |
| 硬件组 |
| 赵兴军 |
| 嵌入式组 |
| 0.5 工作日 |
| 徐国浩 |
| 吴密 |
| 吴密与夏艳伟 |
| 周起有 |
| 暂不开展 |
| 模块供应商 |
| 胡兰东 |
| 赖政 |
| 李晓乐 |
| 待定 |
| 黄登勇 |
| 外包 |
| 赵三健 |
| 外加工 |
| 美国项目 |
| 温岭泽国项目 |
| 泰顺项目 |
| 香港项目 |
| 香港咪表项目 |
| 68 |
| 个人计划 |
| 项目计划 |

## Schedule

| ID | WBS | Task | Duration | Start | Finish | Predecessors | Total slack | Free slack | Resources | Work |
| --- | --- | --- | --- | --- | --- | --- | --- | --- | --- | --- |
| 1 | 1 | 总体项目顺序：美国、售后（温岭、泽国、泰顺）、香港、福州 | 1d? | 2016-06-13 | 2016-06-13 |  | 77.57d |  |  |  |
| 2 | 2 | **美国咪表项目** | 44.86d | 2016-06-13 | 2016-08-05 |  | 8.57d |  | 项目计划 | 742h |
| 3 | 2.1 | 需求分析 | 8h | 2016-06-13 | 2016-06-13 |  | 88.29d |  | 美国项目 | 8h |
| 4 | 2.2 | 立项、计划 | 8h | 2016-06-13 | 2016-06-13 |  | 8.57d | 0d |  |  |
| 5 | 2.3 | 兼容2款投币器供电的原理图 | 14h | 2016-06-14 | 2016-06-15 | 4 | 86.29d |  | 吴密 | 14h |
| 6 | 2.4 | 兼容2款投币器供电的pcb | 56h | 2016-06-13 | 2016-06-21 |  | 16.86d | 0d | 吴密 | 56h |
| 7 | 2.5 | 兼容2款投币器供电的bom | 10h | 2016-06-22 | 2016-06-23 | 6 | 16.86d | 8.29d | 吴密 | 10h |
| 8 | 2.6 | 样板打样 | 40h | 2016-07-04 | 2016-07-11 | 20, 7 | 8.57d | 0d | 外加工 | 40h |
| 9 | 2.7 | 焊接5pcs | 56h | 2016-07-11 | 2016-07-20 | 8 | 8.57d | 0d | 吴密 | 56h |
| 10 | 2.8 | 咪表硬件调试 | 24h | 2016-07-20 | 2016-07-25 | 9 | 8.57d | 0d | 吴密 | 24h |
| 11 | 2.9 | **新充电控制板** | 18.57d | 2016-06-14 | 2016-07-06 |  | 8.57d | 0d |  | 130h |
| 12 | 2.9.1 | 方案设计 | 7h | 2016-06-14 | 2016-06-14 | 4 | 8.57d | 0d | 姚斌 | 7h |
| 13 | 2.9.2 | 找材料（IC） | 7h | 2016-06-14 | 2016-06-15 | 12 | 8.57d | 0d | 姚斌 | 7h |
| 14 | 2.9.3 | IC实验 | 4h | 2016-06-15 | 2016-06-16 | 13 | 8.57d | 0d | 姚斌 | 4h |
| 15 | 2.9.4 | 设计原理图 | 10h | 2016-06-16 | 2016-06-17 | 14 | 8.57d | 0d | 姚斌 | 10h |
| 16 | 2.9.5 | 充电部分BOM | 6h | 2016-06-17 | 2016-06-20 | 15 | 8.57d | 0d | 姚斌 | 6h |
| 17 | 2.9.6 | 调试 | 7h | 2016-06-20 | 2016-06-21 | 16 | 8.57d | 0d | 姚斌 | 7h |
| 18 | 2.9.7 | 测试（充电测试花费时间） | 14h | 2016-06-21 | 2016-06-22 | 17 | 8.57d | 0d | 姚斌 | 14h |
| 19 | 2.9.8 | 修改原理图，修改BOM | 5h | 2016-06-22 | 2016-06-23 | 18 | 8.57d | 0d | 姚斌 | 5h |
| 20 | 2.9.9 | pcb | 56h | 2016-06-23 | 2016-07-04 | 19 | 8.57d | 0d | 吴密 | 56h |
| 21 | 2.9.10 | bom定型 | 14h | 2016-07-04 | 2016-07-06 | 20 | 65.43d |  | 吴密 | 14h |
| 22 | 2.10 | **结构部分** | 2.86d | 2016-06-13 | 2016-06-15 |  | 86.57d |  |  | 20h |
| 23 | 2.10.1 | 图纸输入电脑 | 20h | 2016-06-13 | 2016-06-15 |  | 86.57d |  | 赵三健 | 20h |
| 24 | 2.11 | **咪表程序** | 10d | 2016-07-25 | 2016-08-05 |  | 8.57d |  |  | 70h |
| 25 | 2.11.1 | 配合测试的测试程序新显示屏完善 | 70h | 2016-07-25 | 2016-08-05 | 10 | 8.57d | 0d | 黄登勇 | 70h |

| ID | WBS | Task | Type | Duration | Start | Finish | Predecessors | Total slack | Free slack | Constraint | Resources | Work |
| --- | --- | --- | --- | --- | --- | --- | --- | --- | --- | --- | --- | --- |
| 26 | 3 | **温岭-泽国** |  | 7.14d | 2016-06-13 | 2016-06-21 |  | 0d |  |  | 个人计划 | 100h |
| 27 | 3.1 | 问题分析 |  | 10h | 2016-06-13 | 2016-06-14 |  | 0d |  |  | 温岭泽国项目 | 10h |
| 28 | 3.2 | 问题修改、自测 |  | 20h | 2016-06-14 | 2016-06-16 | 27 | 0d |  |  | 罗家国 | 20h |
| 29 | 3.3 | 送检测试、调整修改 |  | 20h | 2016-06-16 | 2016-06-21 | 28 | 0d |  |  | 罗家国 | 20h |
| 30 | 4 | **泰顺** |  | 20d | 2016-06-21 | 2016-07-14 | 29 | 0d |  |  | 个人计划 | 280h |
| 31 | 4.1 | 需求分析 |  | 10h | 2016-06-21 | 2016-06-22 | 29 | 0d |  |  | 泰顺项目 | 10h |
| 32 | 4.2 | 程序修改 |  | 80h | 2016-06-22 | 2016-07-06 | 31 | 0d |  |  | 罗家国 | 80h |
| 33 | 4.3 | 自测、联调 |  | 20h | 2016-07-06 | 2016-07-08 | 32 | 0d |  |  | 罗家国 | 20h |
| 34 | 4.4 | 送检、文档整理 |  | 10h | 2016-07-11 | 2016-07-12 | 33 | 0d |  |  | 罗家国 | 10h |
| 35 | 4.5 | 调整修改、文件归档 |  | 20h | 2016-07-12 | 2016-07-14 | 34 | 0d |  |  | 罗家国 | 20h |
| 36 | 5 | **香港咪表项目** |  | 89.43d | 2016-06-13 | 2016-09-29 |  | 0d |  |  | 项目计划 | 2354h |
| 37 | 5.1 | 项目立项 |  | 8h | 2016-07-14 | 2016-07-15 | 35 | 0d |  | start no earlier than 2016-06-14 | 香港咪表项目 | 8h |
| 38 | 5.2 | 需求分析 |  | 16h | 2016-07-15 | 2016-07-19 | 37 | 0d |  | start no earlier than 2016-06-13 | 罗家国 | 16h |
| 39 | 5.3 | 方案整理 |  | 40h | 2016-07-19 | 2016-07-26 | 38 | 0d |  |  | 罗家国 | 40h |
| 40 | 5.4 | 方案讨论、评审 |  | 8h | 2016-07-26 | 2016-07-27 | 39 | 0d |  |  | 罗家国 | 8h |
| 41 | 5.5 | EPM与CCS的通讯协议 |  | 40h | 2016-07-27 | 2016-08-03 | 40 | 0d |  |  | 罗家国 | 40h |
| 42 | 5.6 | PPP与CCS的通讯协议 |  | 24h | 2016-06-13 | 2016-06-15 |  | 86d |  |  | 外包 | 24h |
| 43 | 5.7 | 原理图设计和整理 |  | 30h | 2016-08-03 | 2016-08-09 | 41 | 0d |  |  | 罗家国; 吴密 | 60h |
| 44 | 5.8 | 原理图评审 | milestone | 4h | 2016-08-09 | 2016-08-09 | 43 | 0d |  |  | 罗家国 | 4h |
| 45 | 5.9 | PCB设计 | milestone | 80h | 2016-08-10 | 2016-08-23 | 10, 44 | 12.86d | 0d |  | 吴密 | 80h |
| 46 | 5.10 | 打样 |  | 40h | 2016-08-24 | 2016-08-30 | 45 | 12.86d | 0d |  | 外加工 | 40h |
| 47 | 5.11 | BOM制作 | milestone | 40h | 2016-08-24 | 2016-08-30 | 45 | 24.29d |  |  | 吴密 | 40h |
| 48 | 5.12 | 样板焊接 |  | 40h | 2016-08-31 | 2016-09-06 | 46, 41 | 12.86d | 0d |  | 吴密 | 40h |
| 49 | 5.13 | 样板调试 | milestone | 40h | 2016-09-07 | 2016-09-13 | 48 | 12.86d |  |  | 罗家国; 吴密 | 80h |
| 50 | 5.14 | 电池的充电模块设计 |  | 30h | 2016-07-06 | 2016-07-11 | 11 | 65.43d |  |  | 姚斌 | 30h |

| ID | WBS | Task | Type | Duration | Start | Finish | Predecessors | Total slack | Free slack | Constraint | Resources | Work |
| --- | --- | --- | --- | --- | --- | --- | --- | --- | --- | --- | --- | --- |
| 51 | 5.15 | **结构设计** |  | 31.43d | 2016-06-22 | 2016-07-29 |  | 50d |  |  |  | 220h |
| 52 | 5.15.1 | BOM、外发加工图纸 |  | 40h | 2016-06-22 | 2016-06-28 |  | 50d | 0d | start no earlier than 2016-06-22 | 赵三健 | 40h |
| 53 | 5.15.2 | 样机加工跟踪，安装调试 |  | 160h | 2016-06-29 | 2016-07-26 | 52 | 50d | 0d |  | 赵三健 | 160h |
| 54 | 5.15.3 | 整机安装调试 | milestone | 20h | 2016-07-27 | 2016-07-29 | 53 | 50d |  |  | 赵三健 | 20h |
| 55 | 5.16 | **八达通模块** |  | 31.43d | 2016-08-05 | 2016-09-13 |  | 8.57d |  |  |  | 220h |
| 56 | 5.16.1 | 八达通模块程序编写 |  | 80h | 2016-08-05 | 2016-08-19 | 25 | 8.57d | 0d |  | 黄登勇 | 80h |
| 57 | 5.16.2 | 八达通模块程序调试 |  | 50h | 2016-08-19 | 2016-08-29 | 56 | 8.57d | 0d |  | 黄登勇 | 50h |
| 58 | 5.16.3 | 八达通模块程序接口调用和文件说明整理 | milestone | 90h | 2016-08-29 | 2016-09-13 | 57 | 8.57d | 0d |  | 黄登勇 | 90h |
| 59 | 5.17 | **银行卡模块** |  | 12.57d | 2016-06-13 | 2016-06-27 |  | 28.29d |  |  |  | 88h |
| 60 | 5.17.1 | 刷卡消费程序编写 |  | 24h | 2016-06-13 | 2016-06-15 |  | 28.29d | 0d |  | 赖政 | 24h |
| 61 | 5.17.2 | 参数设置程序编写 |  | 24h | 2016-06-16 | 2016-06-20 | 60 | 28.29d | 0d |  | 赖政 | 24h |
| 62 | 5.17.3 | 模块程序整理 |  | 8h | 2016-06-21 | 2016-06-21 | 61 | 28.29d | 0d |  | 赖政 | 8h |
| 63 | 5.17.4 | 会话程序移植 |  | 16h | 2016-06-22 | 2016-06-23 | 62 | 28.29d | 0d |  | 赖政 | 16h |
| 64 | 5.17.5 | 程序接口调用和文件说明整理 | milestone | 16h | 2016-06-24 | 2016-06-27 | 63 | 28.29d | 0d |  | 赖政 | 16h |
| 65 | 5.18 | **蓝牙模块** |  | 12.57d | 2016-06-28 | 2016-07-12 |  | 28.29d |  |  |  | 88h |
| 66 | 5.18.1 | 资料熟悉 |  | 24h | 2016-06-28 | 2016-06-30 | 64 | 28.29d | 0d |  | 赖政 | 24h |
| 67 | 5.18.2 | 程序编写 |  | 24h | 2016-07-01 | 2016-07-05 | 66 | 28.29d | 0d |  | 赖政 | 24h |
| 68 | 5.18.3 | 调试、测试 | milestone | 40h | 2016-07-06 | 2016-07-12 | 67 | 28.29d | 0d |  | 赖政 | 40h |
| 69 | 5.19 | **咪表程序** |  | 55.71d | 2016-07-13 | 2016-09-19 |  | 8.57d |  |  |  | 272h |
| 70 | 5.19.1 | 框架编写 |  | 16h | 2016-08-10 | 2016-08-11 | 44 | 0d |  |  | 罗家国 | 16h |
| 71 | 5.19.2 | 费率编写 | milestone | 80h | 2016-07-13 | 2016-07-26 | 68 | 28.29d | 16d |  | 赖政 | 80h |
| 72 | 5.19.3 | 整体流程编写 | milestone | 16h | 2016-08-12 | 2016-08-15 | 70 | 0d |  |  | 罗家国 | 16h |
| 73 | 5.19.4 | 费率移植、调试 | milestone | 10h | 2016-08-16 | 2016-08-17 | 72, 71 | 35.43d |  |  | 罗家国 | 10h |
| 74 | 5.19.5 | 银行卡模块程序移植 |  | 8h | 2016-08-16 | 2016-08-16 | 72, 64 | 0d |  |  | 罗家国 | 8h |
| 75 | 5.19.6 | 银行卡模块程序调试 | milestone | 16h | 2016-08-17 | 2016-08-18 | 74 | 0d |  |  | 罗家国 | 16h |
| 76 | 5.19.7 | 蓝牙模块程序移植 |  | 16h | 2016-08-19 | 2016-08-22 | 75, 68 | 0d |  |  | 罗家国 | 16h |
| 77 | 5.19.8 | 蓝牙模块程序调试 |  | 16h | 2016-08-23 | 2016-08-24 | 76 | 0d |  |  | 罗家国 | 16h |
| 78 | 5.19.9 | 管理菜单编写 | milestone | 30h | 2016-08-25 | 2016-08-30 | 77 | 0d |  |  | 罗家国 | 30h |
| 79 | 5.19.10 | 显示字模、子程序编写 |  | 16h | 2016-08-30 | 2016-09-01 | 71, 78 | 0d |  |  | 赖政 | 16h |
| 80 | 5.19.11 | 记录发送、记录校验 |  | 16h | 2016-09-01 | 2016-09-05 | 79 | 0d |  |  | 罗家国 | 16h |
| 81 | 5.19.12 | 八达通模块程序移植 |  | 16h | 2016-09-13 | 2016-09-15 | 75, 58 | 8.57d | 0d |  | 罗家国 | 16h |
| 82 | 5.19.13 | 八达通模块程序调试 | milestone | 16h | 2016-09-15 | 2016-09-19 | 81 | 8.57d |  |  | 罗家国 | 16h |

| ID | WBS | Task | Type | Duration | Start | Finish | Predecessors | Total slack | Constraint | Resources | Work |
| --- | --- | --- | --- | --- | --- | --- | --- | --- | --- | --- | --- |
| 83 | 5.20 | **联调** |  | 8.57d | 2016-09-05 | 2016-09-15 |  | 0d |  | 产品组 | 120h |
| 84 | 5.20.1 | 系统联调 | milestone | 40h | 2016-09-05 | 2016-09-12 | 80 | 0d | start no earlier than 2015-03-05 | 罗家国 | 40h |
| 85 | 5.20.2 | 自测、功耗调试 |  | 10h | 2016-09-12 | 2016-09-13 | 84 | 0d |  | 罗家国 | 10h |
| 86 | 5.20.3 | 程序优化、功能调试 |  | 10h | 2016-09-14 | 2016-09-15 | 85 | 11.43d |  | 罗家国 | 10h |
| 87 | 5.21 | 送检文档编写、送检 |  | 10h | 2016-09-14 | 2016-09-15 | 85 | 0d | start no earlier than 2015-03-05 | 罗家国 | 10h |
| 88 | 5.22 | 整机测试、反馈修改 | milestone | 80h | 2016-09-15 | 2016-09-29 | 87 | 0d |  | 工程部; 罗家国 | 160h |
| 89 | 5.23 | 说明书等文档编写、评审 | milestone | 20h | 2016-09-15 | 2016-09-19 | 87 | 8.57d |  | 罗家国; 赖政 | 40h |
