# T系列测量仪开发计划

Schedule from MS Project, 2017-11-13 to 2018-01-05.

## Calendars

- 标准: Mon-Fri 08:00-12:00, 13:00-17:00; Sat-Sun off. Exceptions (off unless hours are given): 2018-01-01 to 2018-01-03 (元旦).

## Resources

| Resource |
| --- |
| 项目组 |
| 罗家国 |
| 王华 |
| 沈礼 |
| 李杨 |
| 郑贤 |
| 向莉 |
| 品质部 |
| 外发 |

## Schedule

| ID | WBS | Task | Type | Duration | Start | Finish | Predecessors | Total slack | Free slack | Constraint | Resources | Work |
| --- | --- | --- | --- | --- | --- | --- | --- | --- | --- | --- | --- | --- |
| 1 | 1 | **T系列测量仪开发计划（除T9C、T80C）** |  | 36.5d | 2017-11-13 08:00 | 2018-01-05 12:00 |  | 0d |  |  |  | 940h |
| 2 | 1.1 | **技术评审** |  | 1.5d | 2017-11-13 08:00 | 2017-11-14 12:00 |  | 0d |  |  |  | 12h |
| 3 | 1.1.1 | 需求分析 |  | 10h | 2017-11-13 08:00 | 2017-11-14 10:00 |  | 0d |  | start no earlier than 2017-11-13 08:00 | 项目组 | 10h |
| 4 | 1.1.2 | 立项评审 |  | 2h | 2017-11-14 10:00 | 2017-11-14 12:00 | 3 | 0d |  |  | 项目组 | 2h |
| 5 | 1.2 | 文档：立项分析、评审报告 |  | 4h | 2017-11-14 13:00 | 2017-11-14 17:00 | 4 | 0d |  |  | 罗家国 | 4h |
| 6 | 1.3 | **技术研究** |  | 7d | 2017-11-13 08:00 | 2017-11-21 17:00 |  | 2.5d |  |  |  | 176h |
| 7 | 1.3.1 | 开发计划 |  | 8h | 2017-11-15 08:00 | 2017-11-15 17:00 | 5 | 0.5d | 0d |  | 罗家国 | 8h |
| 8 | 1.3.2 | 方案编写 |  | 8h | 2017-11-16 08:00 | 2017-11-16 17:00 | 7 | 0.5d | 0d |  | 罗家国 | 8h |
| 9 | 1.3.3 | **模块资料收集、调试** |  | 7d | 2017-11-13 08:00 | 2017-11-21 17:00 |  | 4.5d |  |  |  | 160h |
| 10 | 1.3.3.1 | 触摸彩屏 |  | 16h | 2017-11-17 08:00 | 2017-11-20 17:00 | 8 | 8.5d | 0d |  | 罗家国; 王华 | 32h |
| 11 | 1.3.3.2 | 多模GNSS模组 |  | 16h | 2017-11-17 08:00 | 2017-11-20 17:00 | 8 | 0.5d | 0d |  | 王华 | 16h |
| 12 | 1.3.3.3 | 1m精度多模GNSS模组 |  | 56h | 2017-11-13 08:00 | 2017-11-21 17:00 |  | 29.5d |  |  | 罗家国; 王华 | 112h |
| 13 | 1.4 | 文档：开发计划、方案、模块资料 |  | 4h | 2017-11-21 08:00 | 2017-11-21 12:00 | 11 | 0.5d | 0d |  | 罗家国; 王华 | 8h |
| 14 | 1.5 | **产品设计** |  | 34.5d | 2017-11-15 08:00 | 2018-01-05 12:00 |  | 0d |  |  |  | 740h |
| 15 | 1.5.1 | **硬件设计** |  | 16d | 2017-11-21 13:00 | 2017-12-13 12:00 |  | 0d |  |  |  | 124h |
| 16 | 1.5.1.1 | 2款原理图设计 |  | 16h | 2017-11-21 13:00 | 2017-11-23 12:00 | 13 | 0.5d | 0d |  | 王华 | 16h |
| 17 | 1.5.1.2 | 设计评审 | milestone | 2h | 2017-11-23 13:00 | 2017-11-23 15:00 | 16 | 0.5d |  |  | 项目组 | 2h |
| 18 | 1.5.1.3 | 2款PCB绘制 |  | 48h | 2017-11-24 10:00 | 2017-12-04 10:00 | 26, 17 | 0d |  |  | 王华 | 48h |
| 19 | 1.5.1.4 | 设计评审 | milestone | 2h | 2017-12-04 10:00 | 2017-12-04 12:00 | 18 | 0d |  |  | 项目组 | 2h |
| 20 | 1.5.1.5 | 除T9C外各款BOM整理 |  | 8h | 2017-12-04 13:00 | 2017-12-05 12:00 | 19 | 0d |  |  | 王华 | 8h |
| 21 | 1.5.1.6 | 样板焊接 |  | 40h | 2017-12-05 13:00 | 2017-12-12 12:00 | 20 | 0d |  |  | 外发 | 40h |
| 22 | 1.5.1.7 | 样板调试 | milestone | 8h | 2017-12-12 13:00 | 2017-12-13 12:00 | 21, 32 | 0d |  |  | 王华 | 8h |
| 23 | 1.5.2 | **结构设计** |  | 19d | 2017-11-15 08:00 | 2017-12-11 17:00 |  | 0d |  |  | 向莉 | 152h |
| 24 | 1.5.2.1 | 结构与外观设计调整 |  | 48h | 2017-11-15 08:00 | 2017-11-22 17:00 | 5 | 0d |  |  |  |  |
| 25 | 1.5.2.2 | 设计评审 | milestone | 2h | 2017-11-23 08:00 | 2017-11-23 10:00 | 24 | 0d |  |  |  |  |
| 26 | 1.5.2.3 | BOM、外发加工图纸 |  | 8h | 2017-11-23 10:00 | 2017-11-24 10:00 | 25 | 0d |  |  |  |  |
| 27 | 1.5.2.4 | 样机加工跟踪 |  | 72h | 2017-11-24 10:00 | 2017-12-07 10:00 | 26 | 0.5d | 0d |  |  |  |
| 28 | 1.5.2.5 | 整机安装调试 | milestone | 16h | 2017-12-07 10:00 | 2017-12-11 10:00 | 27 | 0.5d | 0d |  |  |  |
| 29 | 1.5.2.6 | 设计调整与完成 |  | 4h | 2017-12-11 10:00 | 2017-12-11 15:00 | 28 | 0.5d | 0d |  |  |  |
| 30 | 1.5.2.7 | 文档：设计图、BOM单 | milestone | 2h | 2017-12-11 15:00 | 2017-12-11 17:00 | 29 | 0.5d |  |  |  |  |

Notes:
- 1: 计划按照每日8H计算
- 12: 精度

| ID | WBS | Task | Type | Duration | Start | Finish | Predecessors | Total slack | Free slack | Resources | Work |
| --- | --- | --- | --- | --- | --- | --- | --- | --- | --- | --- | --- |
| 31 | 1.5.3 | **T5款嵌入式软件设计** |  | 7d | 2017-12-05 13:00 | 2017-12-14 12:00 |  | 0d |  | 王华 | 56h |
| 32 | 1.5.3.1 | 程序编写、测试、修改 |  | 24h | 2017-12-05 13:00 | 2017-12-08 12:00 | 20 | 2d |  |  |  |
| 33 | 1.5.3.2 | 整机联调、功耗控制 |  | 8h | 2017-12-13 13:00 | 2017-12-14 12:00 | 22, 32 | 0d |  |  |  |
| 34 | 1.5.4 | 文档：送检资料、送检 | milestone | 4h | 2017-12-14 13:00 | 2017-12-14 17:00 | 33 | 0d |  | 王华 | 4h |
| 35 | 1.5.5 | 测试反馈修改、自测 |  | 8h | 2017-12-15 08:00 | 2017-12-15 17:00 | 34 | 0d |  | 王华 | 8h |
| 36 | 1.5.6 | 文档：说明书等编写 |  | 4h | 2017-12-18 08:00 | 2017-12-18 12:00 | 35 | 0d |  | 王华 | 4h |
| 37 | 1.5.7 | 成本控制 | milestone | 40h | 2017-12-18 13:00 | 2017-12-25 12:00 | 36 | 0d |  | 王华 | 40h |
| 38 | 1.5.8 | 中试（7日） | milestone | 40h | 2017-12-25 13:00 | 2018-01-04 12:00 | 37 | 0d |  | 品质部 | 40h |
| 39 | 1.5.9 | 项目总结编写 |  | 4h | 2018-01-04 13:00 | 2018-01-04 17:00 | 38 | 0d |  | 王华 | 4h |
| 40 | 1.5.10 | 项目文件归档 |  | 4h | 2018-01-05 08:00 | 2018-01-05 12:00 | 39 | 0d |  | 王华 | 4h |
| 41 | 1.5.11 | **T60C、T80两款软件** |  | 19.5d | 2017-11-21 08:00 | 2017-12-18 12:00 |  | 6d |  | 罗家国 | 156h |
| 42 | 1.5.11.1 | 触摸彩屏驱动编写 |  | 40h | 2017-11-21 08:00 | 2017-11-27 17:00 | 10 | 8.5d | 0d |  |  |
| 43 | 1.5.11.2 | 应用程序修改 | milestone | 64h | 2017-11-28 08:00 | 2017-12-07 17:00 | 42 | 8.5d | 0d |  |  |
| 44 | 1.5.11.3 | 自测、修改 |  | 8h | 2017-12-08 08:00 | 2017-12-08 17:00 | 43 | 8.5d | 2.5d |  |  |
| 45 | 1.5.11.4 | 整机联调、功耗控制 | milestone | 24h | 2017-12-13 13:00 | 2017-12-18 12:00 | 44, 22 | 6d | 0d |  |  |
| 46 | 1.5.12 | 文档：送检资料、送检 | milestone | 4h | 2017-12-18 13:00 | 2017-12-18 17:00 | 45 | 6d | 0d | 罗家国 | 4h |
| 47 | 1.5.13 | 测试反馈修改、自测 |  | 24h | 2017-12-19 08:00 | 2017-12-21 17:00 | 46 | 6d | 0d |  |  |
| 48 | 1.5.14 | 文档：说明书等编写 |  | 4h | 2017-12-22 08:00 | 2017-12-22 12:00 | 47 | 6d | 0d | 罗家国 | 4h |
| 49 | 1.5.15 | 项目总结编写 |  | 4h | 2017-12-22 13:00 | 2017-12-22 17:00 | 48 | 6d | 0d | 罗家国 | 4h |
| 50 | 1.5.16 | 项目文件归档 |  | 4h | 2017-12-25 08:00 | 2017-12-25 12:00 | 49 | 6d |  | 罗家国 | 4h |
| 51 | 1.5.17 | **T60、T9两款软件** |  | 3.5d | 2017-12-12 08:00 | 2017-12-15 12:00 |  | 0d |  | 沈礼 | 36h |
| 52 | 1.5.17.1 | 程序修改、测试 |  | 8h | 2017-12-12 08:00 | 2017-12-12 17:00 | 23 | 0.5d | 0d |  |  |
| 53 | 1.5.17.2 | 后台导入软件 |  | 8h | 2017-12-13 08:00 | 2017-12-13 17:00 | 52 | 0.5d |  | 沈礼 | 8h |
| 54 | 1.5.17.3 | 整机联调 |  | 8h | 2017-12-14 13:00 | 2017-12-15 12:00 | 23, 31, 53 | 0d |  |  |  |
| 55 | 1.5.18 | 文档：送检资料、送检 |  | 4h | 2017-12-15 13:00 | 2017-12-15 17:00 | 54 | 0d |  | 沈礼 | 4h |
| 56 | 1.5.19 | 文档：说明书等编写 |  | 4h | 2017-12-18 08:00 | 2017-12-18 12:00 | 55 | 0d |  | 沈礼 | 4h |
| 57 | 1.5.20 | 成本控制 |  | 40h | 2017-12-18 13:00 | 2017-12-25 12:00 | 56 | 0d |  | 王华 | 40h |
| 58 | 1.5.21 | 中试（7日） |  | 40h | 2017-12-25 13:00 | 2018-01-04 12:00 | 57 | 0d |  | 品质部 | 40h |
| 59 | 1.5.22 | 项目总结编写 |  | 4h | 2018-01-04 13:00 | 2018-01-04 17:00 | 58 | 0d |  | 沈礼 | 4h |
| 60 | 1.5.23 | 项目文件归档 |  | 4h | 2018-01-05 08:00 | 2018-01-05 12:00 | 59 | 0d |  | 沈礼 | 4h |
| 61 | 1.6 | 产品维护（1年） | milestone | 0d | 2018-01-05 12:00 | 2018-01-05 12:00 | 14 | 0d |  | 项目组 |  |
