# 新咪表计划2014-10-20

Schedule from MS Project, 2016-06-13 to 2016-08-08, status date 2016-02-18.
微软中国

## Calendars

- 标准: Mon-Fri 08:00-12:00, 13:00-17:00; Sat-Sun off.

## Resources

| Resource |
| --- |
| 罗家国 |
| 刘浩 |
| 夏艳伟 |
| 产品组 |
| 郭勤 |
| 姚斌 |
| 易杰 |
| 许建辉 |
| 黄丛峰 |
| 软件组 |
| 工程部 |
| 硬件组 |
| 赵兴军 |
| 嵌入式组 |
| 0.5 工作日 |
| 徐国浩 |
| 吴密 |
| 吴密与夏艳伟 |
| 周起有 |
| 暂不开展 |
| 模块供应商 |
| 胡兰东 |
| 赖政 |
| 李晓乐 |
| 待定 |
| 黄登勇 |
| 外包 |
| 赵三健 |
| 外加工 |

## Schedule

| ID | WBS | Task | Duration | Start | Finish | Predecessors | Total slack | Free slack | Resources | Work |
| --- | --- | --- | --- | --- | --- | --- | --- | --- | --- | --- |
| 1 | 1 | 总体项目顺序：美国、售后（温岭、泽国、泰顺）、香港、福州 | 1d? | 2016-06-13 | 2016-06-13 |  | 39.25d |  |  |  |
| 2 | 2 | **美国咪表项目** | 40.25d? | 2016-06-13 | 2016-08-08 |  | 0d |  |  | 624h |
| 3 | 2.1 | 需求分析 | 8h | 2016-06-13 | 2016-06-13 |  | 0d |  |  |  |
| 4 | 2.2 | 立项、计划 | 8h | 2016-06-14 | 2016-06-14 | 3 | 0d |  |  |  |
| 5 | 2.3 | 兼容2款投币器供电的原理图 | 14h | 2016-06-15 | 2016-06-16 | 4 | 5.75d | 0d | 吴密 | 14h |
| 6 | 2.4 | 兼容2款投币器供电的pcb | 56h | 2016-06-13 | 2016-06-21 |  | 9.5d | 0d | 吴密 | 56h |
| 7 | 2.5 | 兼容2款投币器供电的bom | 10h | 2016-06-22 | 2016-06-23 | 6 | 32d |  | 吴密 | 10h |
| 8 | 2.6 | 样板打样 | 40h | 2016-07-05 | 2016-07-12 | 6, 26 | 0d |  | 外加工 | 40h |
| 9 | 2.7 | 焊接5pcs | 56h | 2016-07-12 | 2016-07-21 | 8 | 0d |  | 吴密 | 56h |
| 10 | 2.8 | 咪表硬件调试 | 24h | 2016-07-21 | 2016-07-26 | 9 | 0d |  | 吴密 | 24h |
| 11 | 2.9 | **结构部分** | 2.5d | 2016-06-13 | 2016-06-15 |  | 37.75d |  |  | 20h |
| 12 | 2.9.1 | 图纸输入电脑 | 20h | 2016-06-13 | 2016-06-15 |  | 37.75d |  | 赵三健 | 20h |
| 13 | 2.10 | **咪表程序** | 40.25d? | 2016-06-13 | 2016-08-08 |  | 0d |  | 黄登勇 | 322h |
| 14 | 2.10.1 | 配合测试的测试程序新显示屏完善 | 70h | 2016-07-26 | 2016-08-08 | 10 | 0d |  |  |  |
| 17 | 2.11 | **新充电控制板** | 16.25d | 2016-06-15 | 2016-07-07 |  | 0d |  |  | 82h |
| 18 | 2.11.1 | 方案设计 | 7h | 2016-06-15 | 2016-06-15 | 4 | 0d |  | 姚斌 | 7h |
| 19 | 2.11.2 | 找材料（IC） | 7h | 2016-06-15 | 2016-06-16 | 18 | 0d |  |  |  |
| 20 | 2.11.3 | IC实验 | 4h | 2016-06-16 | 2016-06-17 | 19 | 0d |  |  |  |
| 21 | 2.11.4 | 设计原理图 | 10h | 2016-06-17 | 2016-06-20 | 20 | 0d |  |  |  |
| 22 | 2.11.5 | 充电部分BOM | 6h | 2016-06-20 | 2016-06-21 | 21 | 0d |  |  |  |
| 23 | 2.11.6 | 调试 | 7h | 2016-06-21 | 2016-06-22 | 22 | 0d |  |  |  |
| 24 | 2.11.7 | 测试（充电测试花费时间） | 14h | 2016-06-22 | 2016-06-23 | 23 | 0d |  |  |  |
| 25 | 2.11.8 | 修改原理图，修改BOM | 5h | 2016-06-23 | 2016-06-24 | 24 | 0d |  | 姚斌 | 5h |
| 26 | 2.11.9 | pcb | 56h | 2016-06-24 | 2016-07-05 | 25 | 0d |  | 吴密 | 56h |
| 27 | 2.11.10 | bom定型 | 14h | 2016-07-05 | 2016-07-07 | 26 | 22d |  | 吴密 | 14h |

| ID | WBS | Task | Duration | Start | Finish | Predecessors | Total slack | Free slack | Constraint | Resources | Work |
| --- | --- | --- | --- | --- | --- | --- | --- | --- | --- | --- | --- |
| 29 | 3 | **温岭-泽国** | 6.25d | 2016-06-13 | 2016-06-21 |  | 34d |  |  |  |  |
| 30 | 3.1 | 问题分析 | 10h | 2016-06-13 | 2016-06-14 |  | 16.5d | 0d |  |  |  |
| 31 | 3.2 | 问题修改、自测 | 20h | 2016-06-14 | 2016-06-16 | 30 | 34d | 0d |  |  |  |
| 32 | 3.3 | 送检测试、调整修改 | 20h | 2016-06-16 | 2016-06-21 | 31 | 34d |  |  |  |  |
| 33 | 4 | **泰顺** | 17.5d | 2016-07-05 | 2016-07-28 |  | 6.75d |  |  |  |  |
| 34 | 4.1 | 需求分析 | 10h | 2016-07-05 | 2016-07-06 | 46 | 6.75d | 0d |  |  |  |
| 35 | 4.2 | 程序修改 | 80h | 2016-07-06 | 2016-07-20 | 34 | 6.75d | 0d |  |  |  |
| 36 | 4.3 | 自测 | 20h | 2016-07-20 | 2016-07-22 | 35 | 6.75d | 0d |  |  |  |
| 37 | 4.4 | 送检、文档整理 | 10h | 2016-07-22 | 2016-07-25 | 36 | 6.75d | 0d |  |  |  |
| 38 | 4.5 | 调整修改、文件归档 | 20h | 2016-07-26 | 2016-07-28 | 37 | 6.75d |  |  |  |  |
| 41 | 5 | **香港咪表项目** | 25d? | 2016-06-13 | 2016-07-15 |  | 6.75d |  |  |  | 1246h |
| 42 | 5.1 | 项目立项 | 8h | 2016-06-13 | 2016-06-13 |  | 6.75d | 0d | start no earlier than 2016-06-13 |  |  |
| 43 | 5.2 | 需求分析 | 24h | 2016-06-14 | 2016-06-16 | 42 | 6.75d | 0d | start no earlier than 2016-06-13 | 罗家国 | 24h |
| 44 | 5.3 | 方案整理 | 32h | 2016-06-17 | 2016-06-22 | 43 | 6.75d | 0d |  | 罗家国 | 32h |
| 45 | 5.4 | EPM与CCS的通讯协议 | 40h | 2016-06-23 | 2016-06-29 | 44 | 6.75d | 0d |  | 罗家国 | 40h |
| 46 | 5.5 | PPP与CCS的通讯协议 | 24h | 2016-06-30 | 2016-07-04 | 45 | 6.75d | 0d |  | 外包 | 24h |
| 47 | 5.6 | 原理图设计和整理 | 40h | 2016-06-23 | 2016-06-29 | 44 | 27.25d |  |  | 罗家国; 吴密 | 80h |
| 48 | 5.7 | PCB设计 | 80h | 2016-06-13 | 2016-06-24 |  | 30.25d |  |  | 吴密 | 80h |
| 49 | 5.8 | 打样 | 40h | 2016-06-13 | 2016-06-17 |  | 35.25d |  |  | 外包 | 40h |
| 50 | 5.9 | BOM制作 | 40h | 2016-06-13 | 2016-06-17 |  | 35.25d |  |  | 吴密 | 40h |
| 51 | 5.10 | 样板焊接 | 40h | 2016-06-13 | 2016-06-17 |  | 35.25d |  |  |  |  |
| 52 | 5.11 | 样板调试 | 40h | 2016-06-13 | 2016-06-17 |  | 35.25d |  |  | 罗家国; 吴密 | 80h |
| 53 | 5.12 | 电池的充电模块设计 | 1d? | 2016-06-13 | 2016-06-13 |  | 39.25d |  |  | 姚斌 | 8h |
| 54 | 5.13 | 结构设计 | 200h | 2016-06-13 | 2016-07-15 |  | 15.25d |  |  | 赵三健 | 200h |

| ID | WBS | Task | Type | Duration | Start | Finish | Predecessors | Total slack | Free slack | Constraint | Resources | Work |
| --- | --- | --- | --- | --- | --- | --- | --- | --- | --- | --- | --- | --- |
| 55 | 5.14 | **八达通模块** |  | 11.25d | 2016-06-13 | 2016-06-28 |  | 27d |  |  | 黄登勇 | 90h |
| 56 | 5.14.1 | 八达通模块程序编写 |  | 80h | 2016-06-13 | 2016-06-24 |  | 30.25d |  |  |  |  |
| 57 | 5.14.2 | 八达通模块程序调试 |  | 50h | 2016-06-13 | 2016-06-21 |  | 34d |  |  |  |  |
| 58 | 5.14.3 | 八达通模块程序接口调用和文件说明整理 |  | 90h | 2016-06-13 | 2016-06-28 |  | 27d | 1.75d |  |  |  |
| 59 | 5.15 | **银行卡模块** |  | 11d | 2016-06-13 | 2016-06-27 |  | 25.25d |  |  | 赖政 | 88h |
| 60 | 5.15.1 | 刷卡消费程序编写 |  | 24h | 2016-06-13 | 2016-06-15 |  | 25.25d | 0d |  |  |  |
| 61 | 5.15.2 | 参数设置程序编写 |  | 24h | 2016-06-16 | 2016-06-20 | 60 | 25.25d | 0d |  |  |  |
| 62 | 5.15.3 | 模块程序整理 |  | 8h | 2016-06-21 | 2016-06-21 | 61 | 25.25d | 0d |  |  |  |
| 63 | 5.15.4 | 会话程序移植 |  | 16h | 2016-06-22 | 2016-06-23 | 62 | 25.25d | 0d |  |  |  |
| 64 | 5.15.5 | 程序接口调用和文件说明整理 |  | 16h | 2016-06-24 | 2016-06-27 | 63 | 25.25d | 0d |  |  |  |
| 65 | 5.16 | **蓝牙模块** |  | 5d | 2016-06-13 | 2016-06-17 |  | 35.25d |  |  |  |  |
| 66 | 5.16.1 | 资料熟悉 |  | 24h | 2016-06-13 | 2016-06-15 |  | 37.25d |  |  |  |  |
| 67 | 5.16.2 | 程序编写 |  | 24h | 2016-06-13 | 2016-06-15 |  | 37.25d |  |  |  |  |
| 68 | 5.16.3 | 调试、测试 |  | 40h | 2016-06-13 | 2016-06-17 |  | 35.25d |  |  |  |  |
| 69 | 5.17 | **咪表程序** |  | 15d? | 2016-06-13 | 2016-07-01 |  | 25.25d |  |  |  |  |
| 70 | 5.17.1 | 框架编写 |  | 1d? | 2016-06-13 | 2016-06-13 |  | 39.25d |  |  |  |  |
| 71 | 5.17.2 | 费率编写 |  | 1d? | 2016-06-13 | 2016-06-13 |  | 35.25d | 10d |  |  |  |
| 72 | 5.17.3 | 银行卡模块程序移植 |  | 1d? | 2016-06-28 | 2016-06-28 | 71, 64 | 25.25d | 0d |  |  |  |
| 73 | 5.17.4 | 银行卡模块程序调试 |  | 1d? | 2016-06-29 | 2016-06-29 | 72 | 25.25d | 0d |  |  |  |
| 74 | 5.17.5 | 八达通模块程序移植 |  | 1d? | 2016-06-30 | 2016-06-30 | 73, 58 | 25.25d | 0d |  |  |  |
| 75 | 5.17.6 | 八达通模块程序调试 |  | 1d? | 2016-07-01 | 2016-07-01 | 74 | 25.25d |  |  |  |  |
| 76 | 5.18 | **联调** |  | 5d | 2016-06-24 | 2016-06-30 |  | 23.25d |  |  | 产品组 | 64h |
| 77 | 5.18.1 | 系统联调 | milestone | 1d | 2016-06-24 | 2016-06-24 | 102 | 23.25d | 0d | start no earlier than 2015-03-05 |  |  |
| 78 | 5.18.2 | 自测、修改 |  | 1d | 2016-06-27 | 2016-06-27 | 77 | 23.25d | 0d |  | 罗家国; 李晓乐; 许建辉 | 24h |
| 79 | 5.18.3 | 程序优化、功能调试 |  | 3d | 2016-06-28 | 2016-06-30 | 78 | 26.25d |  |  |  |  |
| 80 | 5.19 | 送检文档编写、送检 |  | 1d | 2016-06-28 | 2016-06-28 | 78 | 23.25d | 0d | start no earlier than 2015-03-05 | 罗家国 | 8h |
| 81 | 5.20 | 整机测试 |  | 5d | 2016-06-29 | 2016-07-05 | 80 | 23.25d |  |  | 工程部 | 40h |

| ID | WBS | Task | Type | Duration | Start | Finish | Predecessors | Total slack | Free slack | Resources | Work |
| --- | --- | --- | --- | --- | --- | --- | --- | --- | --- | --- | --- |
| 82 | 5.21 | **说明书等文档编写** |  | 5d | 2016-06-29 | 2016-07-05 | 80 | 23.25d |  | 罗家国; 李晓乐; 许建辉 | 120h |
| 88 | 5.21.1 | 姚斌30H、 |  | 1.5d | 2016-06-13 | 2016-06-14 |  | 38.75d |  | 罗家国 | 12h |
| 89 | 5.21.2 | **咪表嵌入式软件** |  | 9d | 2016-06-13 | 2016-06-23 |  | 23.25d |  | 罗家国 | 176h |
| 90 | 5.21.2.1 | 各模块子程序整理 | milestone | 3d | 2016-06-13 | 2016-06-15 |  | 37.25d |  | 赖政 | 24h |
| 91 | 5.21.2.2 | 各模块子程序整理 | milestone | 3d | 2016-06-13 | 2016-06-15 |  | 23.25d | 0d | 许建辉 | 24h |
| 92 | 5.21.2.3 | 费率编写 | milestone | 0.5d | 2016-06-16 | 2016-06-16 | 91 | 23.25d | 0d | 罗家国 | 4h |
| 93 | 5.21.2.4 | 自发卡预买时泊车流程处理 |  | 1d | 2016-06-16 | 2016-06-17 | 92 | 23.25d | 0d | 罗家国 | 8h |
| 94 | 5.21.2.5 | 自发卡相关记录处理 |  | 0.5d | 2016-06-17 | 2016-06-17 | 93 | 23.25d | 0d |  |  |
| 95 | 5.21.2.6 | 硬币流程编写 |  | 0.5d | 2016-06-20 | 2016-06-20 | 94 | 23.25d | 0d |  |  |
| 96 | 5.21.2.7 | 硬币相关记录整理 |  | 0.5d | 2016-06-20 | 2016-06-20 | 95 | 23.25d | 0d |  |  |
| 97 | 5.21.2.8 | SMS手机支付程序编写 |  | 5d | 2016-06-13 | 2016-06-17 |  | 34.75d | 0d | 待定 | 40h |
| 98 | 5.21.2.9 | SMS手机支付相关记录整理 |  | 0.5d | 2016-06-20 | 2016-06-20 | 97 | 34.75d |  |  |  |
| 99 | 5.21.2.10 | MU509B模块程序移植 |  | 0.5d | 2016-06-21 | 2016-06-21 | 96 | 23.25d | 0d | 罗家国 | 4h |
| 100 | 5.21.2.11 | 管理界面编写 |  | 1d | 2016-06-21 | 2016-06-22 | 99 | 23.25d | 0d |  |  |
| 101 | 5.21.2.12 | 应用程序升级流程编写 |  | 0.5d | 2016-06-22 | 2016-06-22 | 100 | 23.25d | 0d |  |  |
| 102 | 5.21.2.13 | 界面显示 |  | 1d | 2016-06-23 | 2016-06-23 | 101 | 23.25d | 0d |  |  |
